gantt
    title DWA V&V System — Implementation Roadmap
    dateFormat YYYY-MM-DD
    axisFormat %b '%y

    section Phase A · Foundation (Wks 1-4)
    Fix bugs, interface naming, typos         :done, a1, 2026-02-17, 5d
    WorkflowInstance + StepRecord models      :a2, 2026-02-24, 5d
    Document model + AuditLog + IAuditService :a3, 2026-03-03, 5d
    Complete PropertyService + all repos      :a4, 2026-03-10, 5d
    FileMasterController + views              :a5, 2026-03-17, 5d
    Register all services in DI               :milestone, after a5, 0d

    section Phase B · Workflow Engine (Wks 5-8)
    IWorkflowEngine state machine             :b1, 2026-03-24, 7d
    CP01-CP05 Phase 1 Inception workflow      :b2, 2026-03-31, 5d
    CP06-CP16 Phase 2 Verification workflow   :b3, 2026-04-07, 7d
    WorkflowController + views + gate rules   :b4, 2026-04-14, 5d
    Workflow engine complete                  :milestone, after b4, 0d

    section Phase C · Calculator Engine (Wks 9-12)
    SAPWAT calculator                         :c1, 2026-04-21, 5d
    Dam Volume + ELU calculators              :c2, 2026-04-28, 7d
    SFRA calculator                           :c3, 2026-05-05, 5d
    FieldAndCrop + Dam + Storing + Forestation views :c4, 2026-05-12, 7d
    Calculators integrated into workflow      :milestone, after c4, 0d

    section Phase D · Letter & Correspondence (Wks 13-16)
    Letter template system (QuestPDF)         :d1, 2026-05-19, 5d
    ILetterService — all 7 letter types       :d2, 2026-05-26, 7d
    Section 35 letter state machine           :d3, 2026-06-02, 5d
    LetterController + views + batch          :d4, 2026-06-09, 5d
    Letter engine complete                    :milestone, after d4, 0d

    section Phase E · Notification & Signature (Wks 17-20)
    Notification model + INotificationService :e1, 2026-06-16, 5d
    Email sending + background jobs           :e2, 2026-06-23, 5d
    DigitalSignature + SignatureRequest models :e3, 2026-06-30, 5d
    ISignatureService + SignaturePad.js       :e4, 2026-07-07, 5d
    Notify & sign complete                    :milestone, after e4, 0d

    section Phase F · Public Portal (Wks 21-26)
    PublicUser model + Identity config        :f1, 2026-07-14, 5d
    Registration flow + email verification    :f2, 2026-07-21, 5d
    Portal Dashboard + Case detail view       :f3, 2026-07-28, 7d
    Sign letter + Upload docs + Notifications :f4, 2026-08-04, 5d
    Security hardening + penetration testing  :f5, 2026-08-11, 7d
    Public portal complete                    :milestone, after f5, 0d

    section Phase G · Integration & Reporting (Wks 27-32)
    WARMS integration — delta + ELU update    :g1, 2026-08-18, 10d
    eWULAAS + SG + Deeds Office integration   :g2, 2026-09-01, 10d
    Reporting service + report views          :g3, 2026-09-15, 7d
    Data migration tools (MS Access V&V DBs)  :g4, 2026-09-22, 7d
    Integration & reporting complete          :milestone, after g4, 0d

    section Phase H · Stabilisation & Deployment (Wks 33-36)
    End-to-end testing with migrated data     :h1, 2026-09-29, 10d
    Performance optimisation + indexing       :h2, 2026-10-13, 5d
    User acceptance testing — DWS offices     :h3, 2026-10-13, 7d
    Training materials + sessions             :h4, 2026-10-20, 5d
    DWS IT environment deployment             :h5, 2026-10-27, 5d
    Production go-live                        :milestone, 2026-11-03, 0d
